Schedule from MS Project, 2020-03-11 to 2020-07-06, costs in ¥.
Microsoft

## Calendars

- 标准: Mon-Fri 08:00-12:00, 13:00-17:00; Sat-Sun off.

## Resources

| Resource | Group | Rate |
| --- | --- | --- |
| 管理人员 | 管理人员 | 90 |
| 项目经理 | 项目经理 | 100 |
| 分析人员 | 分析员 | 80 |
| 开发人员1 | 程序员 | 90 |
| 测试人员2 | 测试员 | 80 |
| 技术联络人员 | 技术联络员 | 50 |
| 培训师 | 培训员 | 50 |
| 部署人员 | 部署人员 | 60 |
| 办公费用 |  |  |
| 开发人员2 | 程序员 | 90 |
| 测试人员1 | 测试员 | 80 |

## Schedule

| ID | WBS | Task | Type | Duration | Start | Finish | Predecessors | Total slack | Constraint | Resources | Work | Cost |
| --- | --- | --- | --- | --- | --- | --- | --- | --- | --- | --- | --- | --- |
| 1 | 1 | **山东省企业就业失业数据采集软件系统开发** |  | 83d | 2020-03-11 | 2020-07-06 |  | 0d |  |  | 920h | 79,520 |
| 2 | 1.1 | **项目立项** |  | 3d | 2020-03-11 | 2020-03-16 |  | 0d |  |  | 32h | 3,120 |
| 3 | 1.1.1 | 确立项目 |  | 2d | 2020-03-11 | 2020-03-13 |  | 0d |  | 项目经理 | 16h | 1,600 |
| 4 | 1.1.2 | 获得项目资金 |  | 1d | 2020-03-13 | 2020-03-16 | 3 | 0d | finish no earlier than 2020-03-07 | 管理人员 | 8h | 720 |
| 5 | 1.1.3 | 获得核心资源 |  | 1d | 2020-03-13 | 2020-03-16 | 3 | 0d |  | 项目经理 | 8h | 800 |
| 6 | 1.1.4 | 完成项目立项 | milestone | 0d | 2020-03-16 | 2020-03-16 | 3, 4, 5 | 0d |  |  |  |  |
| 7 | 1.2 | **项目分析** |  | 12d | 2020-03-16 | 2020-04-01 |  | 0d |  |  | 96h | 8,880 |
| 8 | 1.2.1 | 软件需求分析 |  | 2d | 2020-03-16 | 2020-03-18 | 6 | 0d |  | 分析人员 | 16h | 1,280 |
| 9 | 1.2.2 | 制定需求规制说明 |  | 2d | 2020-03-18 | 2020-03-20 | 8 | 0d |  | 分析人员 | 16h | 1,280 |
| 10 | 1.2.3 | 制定进度计划 |  | 1d | 2020-03-20 | 2020-03-23 | 9 | 0d |  | 项目经理 | 8h | 800 |
| 11 | 1.2.4 | 制定成本计划 |  | 1d | 2020-03-23 | 2020-03-24 | 10 | 0d |  | 项目经理 | 8h | 800 |
| 12 | 1.2.5 | 制定质量计划 |  | 1d | 2020-03-24 | 2020-03-25 | 11 | 0d |  | 项目经理 | 8h | 800 |
| 13 | 1.2.6 | 制定沟通管理计划 |  | 1d | 2020-03-25 | 2020-03-26 | 12 | 0d |  | 项目经理 | 8h | 800 |
| 14 | 1.2.7 | 制定风险管理计划 |  | 1d | 2020-03-26 | 2020-03-27 | 13 | 0d |  | 项目经理 | 8h | 800 |
| 15 | 1.2.8 | 制定配置管理计划 |  | 1d | 2020-03-27 | 2020-03-30 | 14 | 0d |  | 项目经理 | 8h | 800 |
| 16 | 1.2.9 | 制定集成计划 |  | 1d | 2020-03-30 | 2020-03-31 | 15 | 0d |  | 项目经理 | 8h | 800 |
| 17 | 1.2.10 | 审核集成计划 |  | 1d | 2020-03-31 | 2020-04-01 | 10, 11, 12, 13, 14, 15, 16 | 0d |  | 管理人员; 办公费用 [0.1%] | 8h | 720 |
| 18 | 1.2.11 | 完成分析工作 | milestone | 0d | 2020-04-01 | 2020-04-01 | 9, 17 | 0d |  |  |  |  |
| 19 | 1.3 | **系统设计** |  | 8d | 2020-04-01 | 2020-04-13 |  | 0d |  |  | 72h | 6,080 |
| 20 | 1.3.1 | 制定功能规范 |  | 2d | 2020-04-01 | 2020-04-03 | 18 | 0d |  | 分析人员 | 16h | 1,280 |
| 21 | 1.3.2 | 根据功能规范开发原型 |  | 3d | 2020-04-03 | 2020-04-08 | 20 | 0d |  | 分析人员 | 24h | 1,920 |
| 22 | 1.3.3 | 审阅功能规范 |  | 1d | 2020-04-08 | 2020-04-09 | 21 | 0d |  | 管理人员 | 8h | 720 |
| 23 | 1.3.4 | 修改功能规范 |  | 1d | 2020-04-09 | 2020-04-10 | 22 | 0d |  | 分析人员 | 8h | 640 |
| 24 | 1.3.5 | 获得开展后续工作批准 |  | 1d | 2020-04-10 | 2020-04-13 | 23 | 0d |  | 管理人员; 项目经理 | 16h | 1,520 |
| 25 | 1.3.6 | 完成设计工作 | milestone | 0d | 2020-04-13 | 2020-04-13 | 24 | 0d |  |  |  |  |

| ID | WBS | Task | Type | Duration | Start | Finish | Predecessors | Total slack | Resources | Work | Cost |
| --- | --- | --- | --- | --- | --- | --- | --- | --- | --- | --- | --- |
| 26 | 1.4 | **系统开发** |  | 31d | 2020-04-13 | 2020-05-26 |  | 0d |  | 464h | 41,760 |
| 27 | 1.4.1 | 确定模块化/分层设计 |  | 3d | 2020-04-13 | 2020-04-16 | 25 | 0d | 开发人员1 | 24h | 2,160 |
| 28 | 1.4.2 | 分派任务 |  | 1d | 2020-04-16 | 2020-04-17 | 27 | 0d | 开发人员1 | 8h | 720 |
| 29 | 1.4.3 | 编程实现 |  | 24d | 2020-04-17 | 2020-05-21 | 28 | 0d | 开发人员1; 开发人员2 | 384h | 34,560 |
| 30 | 1.4.4 | 开发人员测试(初步调试) |  | 3d | 2020-05-21 | 2020-05-26 | 29 | 0d | 开发人员1; 开发人员2 | 48h | 4,320 |
| 31 | 1.4.5 | 完成开发工作 | milestone | 0d | 2020-05-26 | 2020-05-26 | 30 | 0d |  |  |  |
| 32 | 1.5 | **系统测试** |  | 16d | 2020-05-26 | 2020-06-17 |  | 0d |  | 184h | 15,680 |
| 33 | 1.5.1 | 根据软件规范制定单元测试计划 |  | 1d | 2020-05-26 | 2020-05-27 | 31 | 0d | 测试人员1 | 8h | 640 |
| 34 | 1.5.2 | 根据软件规范制定整体测试计划 |  | 1d | 2020-05-26 | 2020-05-27 | 31 | 0d | 测试人员2 | 8h | 640 |
| 35 | 1.5.3 | **单元测试** |  | 8d | 2020-05-27 | 2020-06-08 |  | 0d |  | 88h | 7,520 |
| 36 | 1.5.3.1 | 审阅模块化代码 |  | 1d | 2020-05-27 | 2020-05-28 | 33, 31, 34 | 0d | 测试人员1 | 8h | 640 |
| 37 | 1.5.3.2 | 测试组件模块 |  | 2d | 2020-05-28 | 2020-06-01 | 36, 31 | 0d | 测试人员1 | 16h | 1,280 |
| 38 | 1.5.3.3 | 找出不符合规范的异常情况 |  | 1d | 2020-06-01 | 2020-06-02 | 37 | 0d | 测试人员1 | 8h | 640 |
| 39 | 1.5.3.4 | 修改代码 |  | 3d | 2020-06-02 | 2020-06-05 | 38 | 0d | 开发人员1; 开发人员2 | 48h | 4,320 |
| 40 | 1.5.3.5 | 重新测试修改后代码 |  | 1d | 2020-06-05 | 2020-06-08 | 39 | 0d | 测试人员1 | 8h | 640 |
| 41 | 1.5.3.6 | 完成单元测试 | milestone | 0d | 2020-06-08 | 2020-06-08 | 40 | 0d |  |  |  |
| 42 | 1.5.4 | **整体测试** |  | 7d | 2020-06-08 | 2020-06-17 |  | 0d |  | 80h | 6,880 |
| 43 | 1.5.4.1 | 测试模块集成情况 |  | 2d | 2020-06-08 | 2020-06-10 | 41 | 0d | 测试人员2 | 16h | 1,280 |
| 44 | 1.5.4.2 | 找出不符合规范的异常情况 |  | 1d | 2020-06-10 | 2020-06-11 | 43 | 0d | 测试人员2 | 8h | 640 |
| 45 | 1.5.4.3 | 修改代码 |  | 3d | 2020-06-11 | 2020-06-16 | 44 | 0d | 开发人员1; 开发人员2 | 48h | 4,320 |
| 46 | 1.5.4.4 | 重新测试修改后代码 |  | 1d | 2020-06-16 | 2020-06-17 | 45 | 0d | 测试人员2 | 8h | 640 |
| 47 | 1.5.4.5 | 完成整体测试 | milestone | 0d | 2020-06-17 | 2020-06-17 | 46 | 0d |  |  |  |
| 48 | 1.6 | **文档撰写** |  | 4d | 2020-06-17 | 2020-06-23 |  | 0d |  | 16h | 800 |
| 49 | 1.6.1 | 制定《帮助》文档 |  | 1d | 2020-06-17 | 2020-06-18 | 47, 29FS-5% | 0d | 技术联络人员 | 8h | 400 |
| 50 | 1.6.2 | 制定《用户手册》 |  | 1d | 2020-06-18 | 2020-06-19 | 49, 29FS-5% | 0d | 技术联络人员 | 8h | 400 |
| 51 | 1.6.3 | 审核《帮助》文档 |  | 1d | 2020-06-19 | 2020-06-22 | 50 | 0d | 办公费用 [0.1%] |  |  |
| 52 | 1.6.4 | 审核《用户手册》 |  | 1d | 2020-06-22 | 2020-06-23 | 51 | 0d | 办公费用 [0.1%] |  |  |
| 53 | 1.6.5 | 完成文档撰写 | milestone | 0d | 2020-06-23 | 2020-06-23 | 52, 51 | 0d |  |  |  |

| ID | WBS | Task | Type | Duration | Start | Finish | Predecessors | Total slack | Free slack | Constraint | Resources | Work | Cost |
| --- | --- | --- | --- | --- | --- | --- | --- | --- | --- | --- | --- | --- | --- |
| 54 | 1.7 | **试运行** |  | 6d | 2020-06-23 | 2020-07-01 |  | 0d |  |  |  | 40h | 2,400 |
| 55 | 1.7.1 | 制定《试运行计划》 |  | 2d | 2020-06-23 | 2020-06-25 | 53 | 0d |  |  | 部署人员 | 16h | 960 |
| 56 | 1.7.2 | 审核《试运行计划》 |  | 1d | 2020-06-25 | 2020-06-26 | 55 | 0d |  |  | 办公费用 [0.1%] |  |  |
| 57 | 1.7.3 | 软件试运行 |  | 3d | 2020-06-26 | 2020-07-01 | 56 | 0d |  |  | 部署人员 | 24h | 1,440 |
| 58 | 1.7.4 | 完成试运行 | milestone | 0d | 2020-07-01 | 2020-07-01 | 57 | 0d |  |  |  |  |  |
| 59 | 1.8 | **系统验收** |  | 2d | 2020-07-01 | 2020-07-03 |  | 0d |  |  |  |  |  |
| 60 | 1.8.1 | 进行系统测试 |  | 2d | 2020-07-01 | 2020-07-03 | 58 | 0d |  |  |  |  |  |
| 61 | 1.8.2 | 完成系统验收 | milestone | 0d | 2020-07-03 | 2020-07-03 | 60 | 0d |  |  |  |  |  |
| 62 | 1.9 | **人员培训** |  | 13d | 2020-06-17 | 2020-07-06 |  | 0d |  |  |  | 16h | 800 |
| 63 | 1.9.1 | 制定《人员培训计划》 |  | 1d | 2020-06-17 | 2020-06-18 | 47 | 11d | 0d |  | 培训师 | 8h | 400 |
| 64 | 1.9.2 | 审核《人员培训计划》 |  | 1d | 2020-06-18 | 2020-06-19 | 63 | 11d |  |  | 办公费用 [0.1%] |  |  |
| 65 | 1.9.3 | 培训技术人员 |  | 1d | 2020-07-03 | 2020-07-06 | 61 | 0d |  | finish no later than 2020-08-04 | 培训师 | 8h | 400 |
| 66 | 1.9.4 | 完成人员培训 | milestone | 0d | 2020-07-06 | 2020-07-06 | 65 | 0d |  |  |  |  |  |

Notes:
- 66: 整个项目在8月4日前完成
